# BTLQLDA

Schedule from ProjectLibre, 2024-11-01 to 2025-07-30.

## Calendars

- RealWork: Mon-Sun 08:00-12:00, 13:00-17:00. Exceptions (off unless hours are given): 2024-11-02 to 2024-11-03 08:00-12:00, 13:00-17:00, 2024-11-09 to 2024-11-10 08:00-12:00, 13:00-17:00, 2024-11-16 to 2024-11-17 08:00-12:00, 13:00-17:00, 2024-11-23 to 2024-11-24 08:00-12:00, 13:00-17:00, 2024-11-30 08:00-12:00, 13:00-17:00.

## Resources

| Resource | Group | Rate |
| --- | --- | --- |
| Unassigned |  |  |
| Nhóm | Cả nhóm | 200000 |
| Tiến | Lập trình viên/Kiểm thử viên | 50000 |
| Đạt | Quản lý dự án | 50000 |
| Tùng | Lập trình viên/Kiểm thử viên | 50000 |
| Hải | Phân tích viên/Thiết kế viên | 50000 |
| Họp cả đội | Họp | 20000 |

## Schedule

| ID | WBS | Task | Duration | Start | Finish | Predecessors | Complete | Baseline start | Baseline finish | Constraint | Resources |
| --- | --- | --- | --- | --- | --- | --- | --- | --- | --- | --- | --- |
| 1 | 1 | **Dự án Hệ thống quản lý tài chính** | 272d? | 2024-11-01 | 2025-07-30 |  | 100% | 2024-11-01 | 2025-07-16 | start no earlier than 2024-11-01 |  |
| 2 | 1.1 | **1. Thu thập yêu cầu** | 7d? | 2024-11-01 | 2024-11-07 |  | 100% | 2024-11-01 | 2024-11-07 |  |  |
| 3 | 1.1.1 | 1.1. Tìm hiểu yêu cầu thực tế của Khách hàng | 4d? | 2024-11-01 | 2024-11-04 |  | 100% | 2024-11-01 | 2024-11-03 |  | Hải |
| 4 | 1.1.2 | 1.2. Xác nhận yêu cầu của Khách hàng | 4d? | 2024-11-04 | 2024-11-07 | 3 | 100% | 2024-11-04 | 2024-11-07 | start no earlier than 2024-11-04 | Hải |
| 5 | 1.2 | **2. Khởi tạo dự án** | 6d? | 2024-11-09 | 2024-11-14 | 4 | 100% | 2024-11-08 | 2024-11-14 | start no earlier than 2024-11-08 |  |
| 6 | 1.2.1 | 2.1. Lập tôn chỉ dự án | 6d? | 2024-11-09 | 2024-11-14 | 4 | 100% | 2024-11-08 | 2024-11-10 | start no earlier than 2024-11-08 | Đạt |
| 7 | 1.2.2 | 2.2. Xác định nguồn lực | 4d? | 2024-11-11 | 2024-11-14 | 6 | 100% | 2024-11-11 | 2024-11-14 | start no earlier than 2024-11-11 | Đạt |
| 8 | 1.3 | **3. Lập kế hoạch thực hiện dự án** | 7d? | 2024-11-15 | 2024-11-21 | 7 | 100% | 2024-11-15 | 2024-11-21 | start no earlier than 2024-11-15 |  |
| 9 | 1.3.1 | 3.1. Kế hoạch thực hiện sơ bộ | 3d? | 2024-11-15 | 2024-11-17 | 7 | 100% | 2024-11-15 | 2024-11-17 | start no earlier than 2024-11-15 | Đạt |
| 10 | 1.3.2 | 3.2. Kế hoạch thực hiện chi tiết | 7d? | 2024-11-15 | 2024-11-21 | 9 | 100% | 2024-11-18 | 2024-11-21 | start no earlier than 2024-11-18 | Đạt |
| 11 | 1.4 | **4. Xây dựng hệ thống** | 245d? | 2024-11-22 | 2025-07-24 | 10 | 100% | 2024-11-22 | 2025-07-10 | start no earlier than 2024-11-22 |  |
| 12 | 1.4.1 | **4.1. Xác định yêu cầu** | 6d? | 2024-11-22 | 2024-11-27 | 10 | 100% | 2024-11-22 | 2024-11-26 | start no earlier than 2024-11-22 |  |
| 13 | 1.4.1.1 | 4.1.1. Xác định yêu cầu của khách hàng | 2d? | 2024-11-22 | 2024-11-23 |  | 100% | 2024-11-22 | 2024-11-22 |  | Tiến; Tùng |
| 14 | 1.4.1.2 | 4.1.2. Xác định mục đích của phần mềm | 1d? | 2024-11-24 | 2024-11-24 | 13 | 100% | 2024-11-23 | 2024-11-23 |  | Tiến; Tùng |
| 15 | 1.4.1.3 | 4.1.3. Xác định các chức năng phần mềm | 3d? | 2024-11-25 | 2024-11-27 | 14 | 100% | 2024-11-24 | 2024-11-26 |  | Tiến; Tùng |
| 16 | 1.4.2 | **4.2. Phân tích** | 32d? | 2024-11-28 | 2024-12-29 | 15 | 100% | 2024-11-27 | 2024-12-27 | start no earlier than 2024-11-27 |  |
| 17 | 1.4.2.1 | 4.2.1. Phân tích yêu cầu của khách hàng | 1d? | 2024-11-28 | 2024-11-28 |  | 100% | 2024-11-27 | 2024-11-27 |  | Tiến |
| 18 | 1.4.2.2 | 4.2.2. Phân tích yêu cầu của phần mềm | 1d? | 2024-11-29 | 2024-11-29 | 17 | 100% | 2024-11-28 | 2024-11-28 | start no earlier than 2024-11-27 | Tiến |
| 19 | 1.4.2.3 | **4.2.3. Phân tích chức năng nghiệp vụ** | 16d? | 2024-11-30 | 2024-12-15 | 18 | 100% | 2024-11-29 | 2024-12-13 | start no earlier than 2024-11-29 |  |
| 20 | 1.4.2.3.1 | **4.2.3.1. Phân tích chức năng quản lý thu chi và ngân sách** | 3d? | 2024-11-30 | 2024-12-02 |  | 100% | 2024-11-29 | 2024-12-01 | start no earlier than 2024-11-29 |  |
| 21 | 1.4.2.3.1.1 | Phân tích chức năng ghi nhận khoản thu chi | 1d? | 2024-11-30 | 2024-11-30 |  | 100% | 2024-11-29 | 2024-11-29 |  | Tiến; Tùng; Đạt |
| 22 | 1.4.2.3.1.2 | Phân tích chức năng phân loại khoản thu chi | 1d? | 2024-12-01 | 2024-12-01 | 21 | 100% | 2024-11-30 | 2024-11-30 |  | Tiến; Tùng; Đạt |
| 23 | 1.4.2.3.1.3 | Phân tích chức năng thiết lập ngân sách chi tiêu | 1d? | 2024-12-02 | 2024-12-02 | 22 | 100% | 2024-12-01 | 2024-12-01 |  | Tiến; Tùng; Đạt |
| 24 | 1.4.2.3.2 | **4.2.3.2. Phân tích chức năng quản lý tài khoản và ví điện tử** | 2d? | 2024-12-03 | 2024-12-04 | 23 | 100% | 2024-12-02 | 2024-12-03 | start no earlier than 2024-11-30 |  |
| 25 | 1.4.2.3.2.1 | Phân tích chức năng quản lý các ví, tài khoản ngân hàng | 1d? | 2024-12-03 | 2024-12-03 | 23 | 100% | 2024-12-02 | 2024-12-02 |  | Tiến; Tùng; Đạt |
| 26 | 1.4.2.3.2.2 | Phân tích chức năng chia sẻ tài khoản | 1d? | 2024-12-04 | 2024-12-04 | 25 | 100% | 2024-12-03 | 2024-12-03 |  | Tiến; Tùng; Đạt |

| ID | WBS | Task | Duration | Start | Finish | Predecessors | Complete | Baseline start | Baseline finish | Constraint | Resources |
| --- | --- | --- | --- | --- | --- | --- | --- | --- | --- | --- | --- |
| 27 | 1.4.2.3.3 | **4.2.3.3. Phân tích chức năng quản lý tiết kiệm và đầu tư** | 2d? | 2024-12-05 | 2024-12-06 | 26 | 100% | 2024-12-04 | 2024-12-06 | start no earlier than 2024-12-01 |  |
| 28 | 1.4.2.3.3.1 | Phân tích chức năng quản lý khoản tiết kiệm | 1d? | 2024-12-05 | 2024-12-05 | 26 | 100% | 2024-12-04 | 2024-12-04 | start no earlier than 2024-12-01 | Tiến; Tùng; Đạt |
| 29 | 1.4.2.3.3.2 | Phân tích chức năng theo dõi danh mục đầu tư | 2d? | 2024-12-05 | 2024-12-06 |  | 100% | 2024-12-05 | 2024-12-05 |  | Tiến; Tùng; Đạt |
| 30 | 1.4.2.3.3.3 | Phân tích chức năng lập kế hoạch tiết kiệm và đầu tư | 2d? | 2024-12-05 | 2024-12-06 |  | 100% | 2024-12-06 | 2024-12-06 |  | Tiến; Tùng; Đạt |
| 31 | 1.4.2.3.4 | **4.2.3.4. Phân tích chức năng quản lý tài sản** | 3d? | 2024-12-07 | 2024-12-09 | 30 | 100% | 2024-12-06 | 2024-12-08 | start no earlier than 2024-12-02 |  |
| 32 | 1.4.2.3.4.1 | Phân tích chức năng quản lý tài sản cố định | 1d? | 2024-12-07 | 2024-12-07 | 30 | 100% | 2024-12-06 | 2024-12-06 |  | Tiến; Tùng; Đạt |
| 33 | 1.4.2.3.4.2 | Phân tích chức năng quản lý tài sản lưu động | 1d? | 2024-12-08 | 2024-12-08 | 32 | 100% | 2024-12-07 | 2024-12-07 |  | Tiến; Tùng; Đạt |
| 34 | 1.4.2.3.4.3 | Phân tích chức năng theo dõi giá trị và khấu hao tài sản | 1d? | 2024-12-09 | 2024-12-09 | 33 | 100% | 2024-12-08 | 2024-12-08 |  | Tiến; Tùng; Đạt |
| 35 | 1.4.2.3.5 | **4.2.3.5. Phân tích chức năng quản lý nợ** | 3d? | 2024-12-09 | 2024-12-11 | 33 | 100% | 2024-12-08 | 2024-12-09 | start no earlier than 2024-12-03 |  |
| 36 | 1.4.2.3.5.1 | Phân tích chức năng theo dõi khoản nợ và vay | 2d? | 2024-12-09 | 2024-12-10 | 33 | 100% | 2024-12-08 | 2024-12-08 |  | Tiến; Tùng; Đạt |
| 37 | 1.4.2.3.5.2 | Phân tích chức năng nhắc nhở nợ đến hạn | 1d? | 2024-12-11 | 2024-12-11 | 36 | 100% | 2024-12-09 | 2024-12-09 |  | Tiến; Tùng; Đạt |
| 38 | 1.4.2.3.6 | **4.2.3.6. Phân tích chức năng báo cáo tài chính** | 5d? | 2024-12-11 | 2024-12-15 | 36 | 100% | 2024-12-09 | 2024-12-13 | start no earlier than 2024-12-04 |  |
| 39 | 1.4.2.3.6.1 | Phân tích chức năng báo cáo thu nhập và chi tiêu | 1d? | 2024-12-11 | 2024-12-11 | 36 | 100% | 2024-12-09 | 2024-12-09 |  | Tiến; Tùng; Đạt |
| 40 | 1.4.2.3.6.2 | Phân tích chức năng báo cáo dòng tiền | 1d? | 2024-12-12 | 2024-12-12 | 39 | 100% | 2024-12-10 | 2024-12-10 |  | Tiến; Tùng; Đạt |
| 41 | 1.4.2.3.6.3 | Phân tích chức năng báo cáo phân tích ngân sách | 1d? | 2024-12-13 | 2024-12-13 | 40 | 100% | 2024-12-11 | 2024-12-11 |  | Tiến; Tùng; Đạt |
| 42 | 1.4.2.3.6.4 | Phân tích chức năng báo cáo danh mục đầu tư | 1d? | 2024-12-14 | 2024-12-14 | 41 | 100% | 2024-12-12 | 2024-12-12 |  | Tiến; Tùng; Đạt |
| 43 | 1.4.2.3.6.5 | Phân tích chức năng báo cáo khoản vay nợ | 1d? | 2024-12-15 | 2024-12-15 | 42 | 100% | 2024-12-13 | 2024-12-13 |  | Tiến; Tùng; Đạt |
| 44 | 1.4.2.4 | **4.2.4. Phân tích chức năng ứng dụng/website** | 10d? | 2024-12-15 | 2024-12-24 | 43 | 100% | 2024-12-13 | 2024-12-20 | start no earlier than 2024-12-05 |  |
| 45 | 1.4.2.4.1 | Phân tích chức năng đăng nhập đăng ký tài khoản | 1d? | 2024-12-15 | 2024-12-15 | 43 | 100% | 2024-12-13 | 2024-12-13 | start no earlier than 2024-11-27 | Tiến; Tùng; Đạt |
| 46 | 1.4.2.4.2 | Phân tích chức năng quản lý thông tin tài khoản | 1d? | 2024-12-16 | 2024-12-16 | 45 | 100% | 2024-12-14 | 2024-12-14 |  | Tiến; Tùng; Đạt |
| 47 | 1.4.2.4.3 | Phân tích chức năng quản lý thu chi và ngân sách | 1d? | 2024-12-17 | 2024-12-17 | 46 | 100% | 2024-12-15 | 2024-12-15 |  | Tiến; Tùng; Đạt |
| 48 | 1.4.2.4.4 | Phân tích chức năng quản lý tài khoản và ví điện tử | 1d? | 2024-12-18 | 2024-12-18 | 47 | 100% | 2024-12-16 | 2024-12-16 |  | Tiến; Tùng; Đạt |
| 49 | 1.4.2.4.5 | Phân tích chức năng quản lý tiết kiệm và đầu tư | 1d? | 2024-12-19 | 2024-12-19 | 48 | 100% | 2024-12-17 | 2024-12-17 |  | Tiến; Tùng; Đạt |
| 50 | 1.4.2.4.6 | Phân tích chức năng quản lý tài sản | 1d? | 2024-12-20 | 2024-12-20 | 49 | 100% | 2024-12-18 | 2024-12-18 |  | Tiến; Tùng; Đạt |
| 51 | 1.4.2.4.7 | Phân tích chức năng quản lý nợ | 1d? | 2024-12-22 | 2024-12-22 | 50 | 100% | 2024-12-19 | 2024-12-19 |  | Tiến; Tùng; Đạt |
| 52 | 1.4.2.4.8 | Phân tích chức năng báo cáo tài chính | 2d? | 2024-12-23 | 2024-12-24 | 51 | 100% | 2024-12-20 | 2024-12-20 |  | Tiến; Tùng; Đạt |

| ID | WBS | Task | Duration | Start | Finish | Predecessors | Complete | Baseline start | Baseline finish | Constraint | Resources |
| --- | --- | --- | --- | --- | --- | --- | --- | --- | --- | --- | --- |
| 53 | 1.4.2.5 | **4.2.5. Tạo các sơ đồ luồng dữ liệu** | 4d? | 2024-12-25 | 2024-12-28 | 52 | 100% | 2024-12-21 | 2024-12-26 | start no earlier than 2024-12-06 |  |
| 54 | 1.4.2.5.1 | 4.2.5.1. Mức 0 | 1d? | 2024-12-25 | 2024-12-25 | 52 | 100% | 2024-12-21 | 2024-12-22 |  | Tiến; Tùng |
| 55 | 1.4.2.5.2 | 4.2.5.2. Mức 1 | 2d? | 2024-12-26 | 2024-12-27 | 54 | 100% | 2024-12-23 | 2024-12-24 |  | Tiến; Tùng |
| 56 | 1.4.2.5.3 | 4.2.5.3. Mức 2 | 1d? | 2024-12-28 | 2024-12-28 | 55 | 100% | 2024-12-25 | 2024-12-26 |  | Tiến; Tùng |
| 57 | 1.4.2.6 | 4.2.6. Phân tích cơ sở dữ liệu | 1d? | 2024-12-29 | 2024-12-29 | 56 | 100% | 2024-12-27 | 2024-12-27 | start no earlier than 2024-12-08 | Tiến; Tùng |
| 58 | 1.4.3 | **4.3. Thiết kế** | 23d? | 2024-12-30 | 2025-01-21 | 57 | 100% | 2024-12-28 | 2025-01-19 | start no earlier than 2024-12-02 |  |
| 59 | 1.4.3.1 | 4.3.1. Thiết kế giao diện phần mềm | 1d? | 2024-12-30 | 2024-12-30 | 57 | 100% | 2024-12-28 | 2024-12-28 |  | Tiến; Tùng; Hải |
| 60 | 1.4.3.2 | 4.3.2. Thiết kế cơ sở dữ liệu | 1d? | 2024-12-31 | 2024-12-31 | 59 | 100% | 2024-12-29 | 2024-12-29 | start no earlier than 2024-12-10 | Tiến; Tùng; Hải |
| 61 | 1.4.3.3 | **4.3.3. Thiết kế chức năng** | 21d? | 2025-01-01 | 2025-01-21 | 60 | 100% | 2024-12-30 | 2025-01-19 | start no earlier than 2024-12-11 |  |
| 62 | 1.4.3.3.1 | Giai đoạn thiết kế kiến trúc hệ thống | 1d? | 2025-01-01 | 2025-01-01 | 60 | 100% | 2024-12-30 | 2024-12-30 |  | Tiến; Tùng; Hải |
| 63 | 1.4.3.3.2 | Thiết kế chức năng ghi nhận khoản thu chi | 1d? | 2025-01-02 | 2025-01-02 | 62 | 100% | 2024-12-31 | 2024-12-31 | start no earlier than 2024-12-12 | Tiến; Tùng; Hải |
| 64 | 1.4.3.3.3 | Thiết kế chức năng phân loại khoản thu chi | 1d? | 2025-01-03 | 2025-01-03 | 63 | 100% | 2025-01-01 | 2025-01-01 | start no earlier than 2024-12-13 | Tiến; Tùng; Hải |
| 65 | 1.4.3.3.4 | Thiết kế chức năng thiết lập ngân sách chi tiêu | 1d? | 2025-01-04 | 2025-01-04 | 64 | 100% | 2025-01-02 | 2025-01-02 | start no earlier than 2024-12-14 | Tiến; Tùng; Hải |
| 66 | 1.4.3.3.5 | Thiết kế chức năng quản lý các ví, tài khoản ngân hàng | 1d? | 2025-01-05 | 2025-01-05 | 65 | 100% | 2025-01-03 | 2025-01-03 | start no earlier than 2024-12-14 | Tiến; Tùng; Hải |
| 67 | 1.4.3.3.6 | Thiết kế chức năng chia sẻ tài khoản | 1d? | 2025-01-06 | 2025-01-06 | 66 | 100% | 2025-01-04 | 2025-01-04 | start no earlier than 2024-12-15 | Tiến; Tùng; Hải |
| 68 | 1.4.3.3.7 | Thiết kế chức năng quản lý khoản tiết kiệm | 1d? | 2025-01-07 | 2025-01-07 | 67 | 100% | 2025-01-05 | 2025-01-05 | start no earlier than 2024-12-16 | Tiến; Tùng; Hải |
| 69 | 1.4.3.3.8 | Thiết kế chức năng theo dõi danh mục đầu tư | 1d? | 2025-01-08 | 2025-01-08 | 68 | 100% | 2025-01-06 | 2025-01-06 | start no earlier than 2024-12-17 | Tiến; Tùng; Hải |
| 70 | 1.4.3.3.9 | Thiết kế chức năng lập kế hoạch tiết kiệm và đầu tư | 1d? | 2025-01-09 | 2025-01-09 | 69 | 100% | 2025-01-07 | 2025-01-07 | start no earlier than 2024-12-18 | Tiến; Tùng; Hải |
| 71 | 1.4.3.3.10 | Thiết kế chức năng quản lý tài sản cố định | 1d? | 2025-01-10 | 2025-01-10 | 70 | 100% | 2025-01-08 | 2025-01-08 | start no earlier than 2024-12-19 | Tiến; Tùng; Hải |
| 72 | 1.4.3.3.11 | Thiết kế chức năng quản lý tài sản lưu động | 1d? | 2025-01-11 | 2025-01-11 | 71 | 100% | 2025-01-09 | 2025-01-09 | start no earlier than 2024-12-20 | Tiến; Tùng; Hải |
| 73 | 1.4.3.3.12 | Thiết kế chức năng theo dõi giá trị và khấu hao tài sản | 1d? | 2025-01-12 | 2025-01-12 | 72 | 100% | 2025-01-10 | 2025-01-10 | start no earlier than 2024-12-21 | Tiến; Tùng; Hải |
| 74 | 1.4.3.3.13 | Thiết kế chức năng theo dõi khoản vay, nợ | 1d? | 2025-01-13 | 2025-01-13 | 73 | 100% | 2025-01-11 | 2025-01-11 | start no earlier than 2024-12-22 | Tiến; Tùng; Hải |
| 75 | 1.4.3.3.14 | Thiết kế chức năng nhắc nhở nợ đến hạn | 1d? | 2025-01-14 | 2025-01-14 | 74 | 100% | 2025-01-12 | 2025-01-12 | start no earlier than 2024-12-23 | Tiến; Tùng; Hải |
| 76 | 1.4.3.3.15 | Thiết kế chức năng báo cáo thu nhập và chi tiêu | 1d? | 2025-01-15 | 2025-01-15 | 75 | 100% | 2025-01-13 | 2025-01-13 | start no earlier than 2024-12-24 | Tiến; Tùng; Hải |
| 77 | 1.4.3.3.16 | Thiết kế chức năng báo cáo dòng tiền | 1d? | 2025-01-16 | 2025-01-16 | 76 | 100% | 2025-01-14 | 2025-01-14 | start no earlier than 2024-12-25 | Tiến; Tùng; Hải |
| 78 | 1.4.3.3.17 | Thiết kế chức năng báo cáo phân tích ngân sách | 1d? | 2025-01-17 | 2025-01-17 | 77 | 100% | 2025-01-15 | 2025-01-15 | start no earlier than 2024-12-26 | Tiến; Tùng; Hải |
| 79 | 1.4.3.3.18 | Thiết kế chức năng báo cáo phân tích danh mục đầu tư | 1d? | 2025-01-18 | 2025-01-18 | 78 | 100% | 2025-01-16 | 2025-01-16 | start no earlier than 2024-12-27 | Tiến; Tùng; Hải |
| 80 | 1.4.3.3.19 | Thiết kế chức năng báo cáo phân tích khoản vay nợ | 1d? | 2025-01-19 | 2025-01-19 | 79 | 100% | 2025-01-17 | 2025-01-17 | start no earlier than 2024-12-28 | Tiến; Tùng; Hải |
| 81 | 1.4.3.3.20 | Thiết kế chức năng đăng nhập/đăng ký | 1d? | 2025-01-20 | 2025-01-20 | 80 | 100% | 2025-01-18 | 2025-01-18 | start no earlier than 2024-12-29 | Tiến; Tùng; Hải |
| 82 | 1.4.3.3.21 | Thiết kế chức năng quản lý thông tin tài khoản | 1d? | 2025-01-21 | 2025-01-21 | 81 | 100% | 2025-01-19 | 2025-01-19 | start no earlier than 2024-12-30 | Tiến; Tùng; Hải |

| ID | WBS | Task | Duration | Start | Finish | Predecessors | Complete | Baseline start | Baseline finish | Constraint | Resources |
| --- | --- | --- | --- | --- | --- | --- | --- | --- | --- | --- | --- |
| 83 | 1.4.4 | **4.4. Cài đặt** | 153d? | 2025-01-22 | 2025-06-23 | 82 | 100% | 2025-01-20 | 2025-06-22 | start no earlier than 2024-12-16 |  |
| 84 | 1.4.4.1 | Lập trình xử lý nghiệp vụ | 7d? | 2025-01-22 | 2025-01-28 | 82 | 100% | 2025-01-20 | 2025-01-26 |  | Tiến; Tùng |
| 85 | 1.4.4.2 | Lập trình thư viện dùng chung | 7d? | 2025-01-29 | 2025-02-04 | 84 | 100% | 2025-01-27 | 2025-02-02 | start no earlier than 2025-01-07 | Tiến; Tùng |
| 86 | 1.4.4.3 | Lập trình chức năng ghi nhận khoản thu chi | 7d? | 2025-02-05 | 2025-02-11 | 85 | 100% | 2025-02-03 | 2025-02-09 | start no earlier than 2025-01-14 | Tiến; Tùng |
| 87 | 1.4.4.4 | Lập trình chức năng phân loại khoản thu chitrình | 7d? | 2025-02-12 | 2025-02-18 | 86 | 100% | 2025-02-10 | 2025-02-16 | start no earlier than 2025-01-21 | Tiến; Tùng |
| 88 | 1.4.4.5 | Lập trình chức năng thiết lập ngân sách chi tiêu | 7d? | 2025-02-19 | 2025-02-25 | 87 | 100% | 2025-02-17 | 2025-02-23 | start no earlier than 2025-01-28 | Tiến; Tùng |
| 89 | 1.4.4.6 | Lập trình chức năng quản lý các ví, tài khoản ngân hàng | 7d? | 2025-02-26 | 2025-03-04 | 88 | 100% | 2025-02-24 | 2025-03-02 | start no earlier than 2025-02-04 | Tiến; Tùng |
| 90 | 1.4.4.7 | Lập trình chức năng chia sẻ tài khoản | 7d? | 2025-03-05 | 2025-03-11 | 89 | 100% | 2025-03-03 | 2025-03-09 | start no earlier than 2025-02-11 | Tiến; Tùng |
| 91 | 1.4.4.8 | Lập trình chức năng quản lý khoản tiết kiệm | 7d? | 2025-03-12 | 2025-03-18 | 90 | 100% | 2025-03-10 | 2025-03-16 | start no earlier than 2025-02-18 | Tiến; Tùng |
| 92 | 1.4.4.9 | Lập trình chức năng theo dõi danh mục đầu tư | 9d? | 2025-03-19 | 2025-03-27 | 91 | 100% | 2025-03-17 | 2025-03-23 | start no earlier than 2025-02-25 | Tiến; Tùng |
| 93 | 1.4.4.10 | Lập trình chức năng lập kế hoạch tiết kiệm và đầu tư | 7d? | 2025-03-25 | 2025-03-31 | 92 | 100% | 2025-03-24 | 2025-03-30 | start no earlier than 2025-03-04 | Tiến; Tùng |
| 94 | 1.4.4.11 | Lập trình chức năng quản lý tài sản cố địnhtrình | 7d? | 2025-04-01 | 2025-04-07 | 93 | 100% | 2025-03-31 | 2025-04-06 | start no earlier than 2025-03-11 | Tiến; Tùng |
| 95 | 1.4.4.12 | Lập trình chức năng quản lý tài sản lưu động | 7d? | 2025-04-08 | 2025-04-14 | 94 | 100% | 2025-04-07 | 2025-04-13 | start no earlier than 2025-03-18 | Tiến; Tùng |
| 96 | 1.4.4.13 | Lập trình chức năng theo dõi giá trị và khấu hao tài sản | 7d? | 2025-04-15 | 2025-04-21 | 95 | 100% | 2025-04-14 | 2025-04-20 | start no earlier than 2025-03-25 | Tiến; Tùng |
| 97 | 1.4.4.14 | Lập trình chức năng thiết lập ngân sách chi tiêutrình | 7d? | 2025-04-22 | 2025-04-28 | 96 | 100% | 2025-04-21 | 2025-04-27 | start no earlier than 2025-04-01 | Tiến; Tùng |
| 98 | 1.4.4.15 | Lập trình chức năng nhắc nhở nợ đến hạn | 7d? | 2025-04-29 | 2025-05-05 | 97 | 100% | 2025-04-28 | 2025-05-04 | start no earlier than 2025-04-08 | Tiến; Tùng |
| 99 | 1.4.4.16 | Lập trình chức năng báo cáo thu nhập và chi tiêutrình | 7d? | 2025-05-06 | 2025-05-12 | 98 | 100% | 2025-05-05 | 2025-05-11 | start no earlier than 2025-04-15 | Tiến; Tùng |
| 100 | 1.4.4.17 | Lập trình chức năng báo cáo dòng tiền | 7d? | 2025-05-13 | 2025-05-19 | 99 | 100% | 2025-05-12 | 2025-05-18 | start no earlier than 2025-04-22 | Tiến; Tùng |
| 101 | 1.4.4.18 | Lập trình chức năng báo cáo phân tích ngân sách | 7d? | 2025-05-20 | 2025-05-26 | 100 | 100% | 2025-05-19 | 2025-05-25 | start no earlier than 2025-04-29 | Tiến; Tùng |
| 102 | 1.4.4.19 | Lập trình chức năng báo cáo phân tích danh mục đầu tư | 7d? | 2025-05-27 | 2025-06-02 | 101 | 100% | 2025-05-26 | 2025-06-01 | start no earlier than 2025-05-06 | Tiến; Tùng |
| 103 | 1.4.4.20 | Lập trình chức năng báo cáo phân tích khoản vay nợ | 7d? | 2025-06-03 | 2025-06-09 | 102 | 100% | 2025-06-02 | 2025-06-08 | start no earlier than 2025-05-13 | Tiến; Tùng |
| 104 | 1.4.4.21 | Lập trình chức năng đăng nhập/đăng ký | 7d? | 2025-06-10 | 2025-06-16 | 103 | 100% | 2025-06-09 | 2025-06-15 | start no earlier than 2025-05-20 | Tiến; Tùng |
| 105 | 1.4.4.22 | Lập trình chức năng quản lý thông tin tài khoản | 7d? | 2025-06-17 | 2025-06-23 | 104 | 100% | 2025-06-16 | 2025-06-22 | start no earlier than 2025-05-27 | Tiến; Tùng |
| 106 | 1.4.5 | **4.5. Kiểm thử** | 21d? | 2025-06-24 | 2025-07-14 | 105 | 100% | 2025-06-23 | 2025-07-06 | start no earlier than 2025-03-26 |  |
| 107 | 1.4.5.1 | 4.5.1. Thiết kế kiểm thử | 21d? | 2025-06-24 | 2025-07-14 | 105 | 100% | 2025-06-23 | 2025-06-29 |  | Tiến; Tùng |
| 108 | 1.4.5.2 | 4.5.2. Tài liệu kiểm thử và cái đặt hệ thống | 14d? | 2025-07-01 | 2025-07-14 | 107 | 100% | 2025-06-30 | 2025-07-06 | start no earlier than 2025-06-10 | Tiến; Tùng |

| ID | WBS | Task | Type | Duration | Start | Finish | Predecessors | Complete | Baseline start | Baseline finish | Constraint | Resources |
| --- | --- | --- | --- | --- | --- | --- | --- | --- | --- | --- | --- | --- |
| 109 | 1.4.6 | **4.6. Chuyển giao** |  | 10d? | 2025-07-15 | 2025-07-24 | 108 | 100% | 2025-07-07 | 2025-07-10 | start no earlier than 2025-07-14 |  |
| 110 | 1.4.6.1 | 4.6.1. Khách hàng duyệt dự án |  | 10d? | 2025-07-15 | 2025-07-24 | 108 | 100% | 2025-07-07 | 2025-07-07 |  | Nhóm |
| 111 | 1.4.6.2 | 4.6.2. Bàn giao phần mềm cho khách hàng |  | 1d? | 2025-07-18 | 2025-07-18 | 110 | 100% | 2025-07-08 | 2025-07-08 |  | Nhóm |
| 112 | 1.4.6.3 | 4.6.3. Đào tạo huấn luyện cho khách hàng |  | 1d? | 2025-07-19 | 2025-07-19 | 111 | 100% | 2025-07-09 | 2025-07-09 |  | Nhóm |
| 113 | 1.4.6.4 | 4.6.4. Đánh giá và bảo trì |  | 1d? | 2025-07-20 | 2025-07-20 | 112 | 100% | 2025-07-10 | 2025-07-10 |  | Nhóm |
| 114 | 1.5 | 5. Kết thúc dự án | milestone | 6d? | 2025-07-25 | 2025-07-30 | 113 | 100% | 2025-07-11 | 2025-07-16 | start no earlier than 2025-07-20 | Nhóm |
| 115 | 2 | **6. Họp định kỳ** |  | 260d? | 2024-11-06 | 2025-07-23 |  | 100% | 2024-11-06 | 2025-07-10 | start no earlier than 2024-11-01 |  |
| 116 | 2.1 | Họp định kì 1 |  | 1d? | 2024-11-06 | 2024-11-06 |  | 100% | 2024-11-06 | 2024-11-06 | start no earlier than 2024-11-06 | Họp cả đội |
| 117 | 2.2 | Họp định kì 2 |  | 1d? | 2024-11-13 | 2024-11-13 |  | 100% | 2024-11-13 | 2024-11-13 | start no earlier than 2024-11-13 | Họp cả đội |
| 118 | 2.3 | Họp định kì 3 |  | 1d? | 2024-11-20 | 2024-11-20 |  | 100% | 2024-11-20 | 2024-11-20 | start no earlier than 2024-11-20 | Họp cả đội |
| 119 | 2.4 | Họp định kì 4 |  | 1d? | 2024-11-27 | 2024-11-27 |  | 100% | 2024-11-27 | 2024-11-27 | start no earlier than 2024-11-27 | Họp cả đội |
| 120 | 2.5 | Họp định kì 5 |  | 1d? | 2024-12-04 | 2024-12-04 |  | 100% | 2024-12-04 | 2024-12-04 | start no earlier than 2024-12-04 | Họp cả đội |
| 121 | 2.6 | Họp định kì 6 |  | 1d? | 2024-12-11 | 2024-12-11 |  | 100% | 2024-12-11 | 2024-12-11 | start no earlier than 2024-12-11 | Họp cả đội |
| 122 | 2.7 | Họp định kì 7 |  | 1d? | 2024-12-18 | 2024-12-18 |  | 100% | 2024-12-18 | 2024-12-18 | start no earlier than 2024-12-18 | Họp cả đội |
| 123 | 2.8 | Họp định kì 8 |  | 1d? | 2024-12-25 | 2024-12-25 |  | 100% | 2024-12-25 | 2024-12-25 | start no earlier than 2024-12-25 | Họp cả đội |
| 124 | 2.9 | Họp định kì 9 |  | 1d? | 2025-01-01 | 2025-01-01 |  | 100% | 2025-01-01 | 2025-01-01 | start no earlier than 2025-01-01 | Họp cả đội |
| 125 | 2.10 | Họp định kì 10 |  | 1d? | 2025-01-08 | 2025-01-08 |  | 100% | 2025-01-08 | 2025-01-08 | start no earlier than 2025-01-08 | Họp cả đội |
| 126 | 2.11 | Họp định kì 11 |  | 1d? | 2025-01-15 | 2025-01-15 |  | 100% | 2025-01-15 | 2025-01-15 | start no earlier than 2025-01-15 | Họp cả đội |
| 127 | 2.12 | Họp đinh kì 12 |  | 1d? | 2025-01-22 | 2025-01-22 |  | 100% | 2025-01-22 | 2025-01-22 | start no earlier than 2025-01-22 | Họp cả đội |
| 128 | 2.13 | Họp định kì 13 |  | 1d? | 2025-01-29 | 2025-01-29 |  | 100% | 2025-01-29 | 2025-01-29 | start no earlier than 2025-01-29 | Họp cả đội |
| 129 | 2.14 | Họp định kì 14 |  | 1d? | 2025-02-05 | 2025-02-05 |  | 100% | 2025-02-05 | 2025-02-05 | start no earlier than 2025-02-05 | Họp cả đội |
| 130 | 2.15 | Họp định kì 15 |  | 1d? | 2025-02-12 | 2025-02-12 |  | 100% | 2025-02-12 | 2025-02-12 | start no earlier than 2025-02-12 | Họp cả đội |
| 131 | 2.16 | Họp định kì 16 |  | 1d? | 2025-02-19 | 2025-02-19 |  | 100% | 2025-02-19 | 2025-02-19 | start no earlier than 2025-02-19 | Họp cả đội |
| 132 | 2.17 | Họp định kì 17 |  | 1d? | 2025-02-26 | 2025-02-26 |  | 100% | 2025-02-26 | 2025-02-26 | start no earlier than 2025-02-26 | Họp cả đội |
| 133 | 2.18 | Họp định kì 18 |  | 1d? | 2025-03-05 | 2025-03-05 |  | 100% | 2025-03-05 | 2025-03-05 | start no earlier than 2025-03-05 | Họp cả đội |
| 134 | 2.19 | Họp định kì 19 |  | 1d? | 2025-03-12 | 2025-03-12 |  | 100% | 2025-03-12 | 2025-03-12 | start no earlier than 2025-03-12 | Họp cả đội |
| 135 | 2.20 | Họp định kì 20 |  | 1d? | 2025-03-19 | 2025-03-19 |  | 100% | 2025-03-19 | 2025-03-19 | start no earlier than 2025-03-19 | Họp cả đội |
| 136 | 2.21 | Họp định kì 21 |  | 1d? | 2025-03-26 | 2025-03-26 |  | 100% | 2025-03-26 | 2025-03-26 | start no earlier than 2025-03-26 | Họp cả đội |
| 137 | 2.22 | Họp định kì 22 |  | 1d? | 2025-04-02 | 2025-04-02 |  | 100% | 2025-04-02 | 2025-04-02 | start no earlier than 2025-04-02 | Họp cả đội |
| 138 | 2.23 | Họp định kì 23 |  | 1d? | 2025-04-09 | 2025-04-09 |  | 100% | 2025-04-09 | 2025-04-09 | start no earlier than 2025-04-09 | Họp cả đội |
| 139 | 2.24 | Họp định kì 24 |  | 1d? | 2025-04-16 | 2025-04-16 |  | 100% | 2025-04-16 | 2025-04-16 | start no earlier than 2025-04-16 | Họp cả đội |
| 140 | 2.25 | Họp định kì 25 |  | 1d? | 2025-04-23 | 2025-04-23 |  | 100% | 2025-04-23 | 2025-04-23 | start no earlier than 2025-04-23 | Họp cả đội |
| 141 | 2.26 | Họp định kì 26 |  | 1d? | 2025-04-30 | 2025-04-30 |  | 100% | 2025-04-30 | 2025-04-30 | start no earlier than 2025-04-30 | Họp cả đội |
| 142 | 2.27 | Họp định kì 27 |  | 1d? | 2025-05-07 | 2025-05-07 |  | 100% | 2025-05-07 | 2025-05-07 | start no earlier than 2025-05-07 | Họp cả đội |
| 143 | 2.28 | Họp định kì 28 |  | 1d? | 2025-05-14 | 2025-05-14 |  | 100% | 2025-05-14 | 2025-05-14 | start no earlier than 2025-05-14 | Họp cả đội |
| 144 | 2.29 | Họp định kì 29 |  | 1d? | 2025-05-21 | 2025-05-21 |  | 100% | 2025-05-21 | 2025-05-21 | start no earlier than 2025-05-21 | Họp cả đội |
| 145 | 2.30 | Họp định kì 30 |  | 1d? | 2025-05-28 | 2025-05-28 |  | 100% | 2025-05-28 | 2025-05-28 | start no earlier than 2025-05-28 | Họp cả đội |
| 146 | 2.31 | Họp định kì 31 |  | 1d? | 2025-06-04 | 2025-06-04 |  | 100% | 2025-06-04 | 2025-06-04 | start no earlier than 2025-06-04 | Họp cả đội |
| 147 | 2.32 | Họp định kì 32 |  | 1d? | 2025-06-11 | 2025-06-11 |  | 100% | 2025-06-11 | 2025-06-11 | start no earlier than 2025-06-11 | Họp cả đội |
| 148 | 2.33 | Họp định kì 33 |  | 1d? | 2025-06-18 | 2025-06-18 |  | 100% | 2025-06-18 | 2025-06-18 | start no earlier than 2025-06-18 | Họp cả đội |
| 149 | 2.34 | Họp định kì 34 |  | 1d? | 2025-06-25 | 2025-06-25 |  | 100% | 2025-06-25 | 2025-06-26 | start no earlier than 2025-06-25 | Họp cả đội |
| 150 | 2.35 | Họp định kì 35 |  | 1d? | 2025-07-02 | 2025-07-02 |  | 100% | 2025-07-02 | 2025-07-03 | start no earlier than 2025-07-02 | Họp cả đội |
| 151 | 2.36 | Họp định kì 36 |  | 1d? | 2025-07-09 | 2025-07-09 |  | 100% | 2025-07-09 | 2025-07-10 | start no earlier than 2025-07-09 | Họp cả đội |
| 152 | 2.37 | Họp định kì 37 |  | 1d? | 2025-07-16 | 2025-07-16 |  | 100% |  |  | start no earlier than 2025-07-16 | Họp cả đội |
| 153 | 2.38 | Họp định kì 38 |  | 1d? | 2025-07-23 | 2025-07-23 |  | 100% |  |  | start no earlier than 2025-07-23 | Họp cả đội |
